# 人力平台改造立项与实施计划初步估计

Schedule from a web Gantt chart, 2024-08-19 to 2024-10-17.
Saturdays and Sundays are off

## Schedule

| ID | WBS | Task | Duration | Start | Finish | Predecessors | Status |
| --- | --- | --- | --- | --- | --- | --- | --- |
| 2 | 1 | 供应商需求评估 | 3d | 2024-08-19 | 2024-08-21 |  |  |
| 3 | 2 | 对改造费用评估结果进行沟通、压降 | 2d | 2024-08-22 | 2024-08-23 | 2 | waiting |
| 4 | 3 | 人力提交itsm流程，固定需求 | 2d | 2024-08-26 | 2024-08-27 | 3 | waiting |
| 5 | 4 | 调整现有立项报告，沟通、确认 | 3d | 2024-08-26 | 2024-08-28 | 3 | waiting |
| 6 | 5 | 提交立项预审 | 3d | 2024-08-29 | 2024-09-02 | 5 | waiting |
| 7 | 6 | 提交立项流程 | 4d | 2024-09-03 | 2024-09-06 | 6 | waiting |
| 8 | 7 | 发起采购议题 | 4d | 2024-09-09 | 2024-09-12 | 7 | waiting |
| 9 | 8 | 采购文件用印 | 3d | 2024-09-13 | 2024-09-17 | 8 | waiting |
| 10 | 9 | 采购会议排期及采购谈判 | 10d | 2024-09-18 | 2024-10-01 | 9 | waiting |
| 11 | 10 | 采购会议纪要 | 2d | 2024-10-02 | 2024-10-03 | 10 | waiting |
| 12 | 11 | 合同拟定、预审、合同签订 | 10d | 2024-10-04 | 2024-10-17 | 11 | waiting |
| 13 | 12 | 供应商开发 | 1d | 2024-10-02 | 2024-10-02 | 10 | waiting |
